# UAE Etisalat - vIMS deployment_PA1

How a schedule from MS Project changed from version to version. A marks actual dates.

## Version 1 (saved 2018-01-10)

Note of the change: add mpp

| ID | WBS | Task | Duration | Start | Finish | Predecessors | Total float | Constraint |
| --- | --- | --- | --- | --- | --- | --- | --- | --- |
| 1 | 1 | **IMS Modernization** | 176d | 2018-01-21 | 2018-10-01 |  | 0d |  |
| 2 | 1.1 | **vIMS Deployment** | 176d | 2018-01-21 | 2018-10-01 |  | 0d |  |
| 3 |  | MS 1: Contract signed-Project kickoff | 0d | 2018-01-21 | 2018-01-21 |  | 0d | start no earlier than 2018-01-21 |
| 4 |  | Project Mobilization phase | 5d | 2018-01-21 | 2018-01-25 | 3 | 0d | start no earlier than 2017-03-12 |
| 5 | 1.1.3 | **Solution Design** | 50d | 2018-01-28 | 2018-04-05 |  | 3d |  |
| 6 | 1.1.3.1 | **User Requirement Analysis** | 5d | 2018-01-28 | 2018-02-01 |  | 3d |  |
| 7 |  | Information Gathering and Solution Update | 5d | 2018-01-28 | 2018-02-01 | 4 | 3d |  |
| 8 |  | Solution approved by Etisalat | 0d | 2018-02-01 | 2018-02-01 | 6 | 3d |  |
| 9 | 1.1.3.3 | **Service Layer Design** | 13d | 2018-02-04 | 2018-02-20 |  | 153d |  |
| 10 |  | SL Design Information Gathering | 5d | 2018-02-04 | 2018-02-08 | 8 | 153d |  |
| 11 |  | SL Design Preparation and review | 5d | 2018-02-11 | 2018-02-15 | 10 | 153d |  |
| 12 |  | SL CCF Design(Firewall) | 3d | 2018-02-18 | 2018-02-20 | 11 | 153d |  |
| 13 | 1.1.3.4 | **High Level Design Preparation** | 25d | 2018-02-04 | 2018-03-08 |  | 3d |  |
| 14 |  | HLD for BSP/RHOSP | 20d | 2018-02-04 | 2018-03-01 | 8 | 13d |  |
| 15 |  | HLD for vIMS | 25d | 2018-02-04 | 2018-03-08 | 8 | 3d |  |
| 16 | 1.1.3.5 | **Low Level Design Preparation** | 25d | 2018-03-04 | 2018-04-05 |  | 3d |  |
| 17 |  | LLD for BSP/RHOSP | 15d | 2018-03-04 | 2018-03-22 | 14 | 13d |  |
| 18 |  | LLD for vIMS(vSBC,vCSCF,vMTAS,vIPworks,vBGF,vAFG,vEme) | 20d | 2018-03-11 | 2018-04-05 | 15 | 3d |  |
| 19 | 1.1.3.6 | **Verification Test Design Preparation** | 15d | 2018-03-04 | 2018-03-22 |  | 131d |  |
| 20 |  | NFVi ATP Preparation | 10d | 2018-03-04 | 2018-03-15 | 14 | 136d |  |
| 21 |  | Traffic ATP Preparation | 10d | 2018-03-11 | 2018-03-22 | 15 | 131d |  |
| 22 |  | MS 2: Solution design complete | 0d | 2018-04-05 | 2018-04-05 | 5 | 121d |  |
| 23 | 1.1.5 | **HW and SW ordering** | 41d | 2018-01-28 | 2018-03-25 |  | 0d |  |
| 24 | 1.1.5.1 | **HW Ordering** | 41d | 2018-01-28 | 2018-03-25 |  | 0d |  |
| 25 |  | Order Placed as per BoQ | 1d | 2018-01-28 | 2018-01-28 | 4 | 0d |  |
| 26 |  | Lead Time for HW delivery | 8w | 2018-01-29 | 2018-03-25 | 25 | 0d |  |
| 27 | 1.1.5.2 | **SW Ordering** | 10d | 2018-01-28 | 2018-02-08 |  | 161d |  |
| 28 |  | SW ordering | 1w | 2018-01-28 | 2018-02-01 | 4 | 161d |  |
| 29 |  | Licenses ordering | 5d | 2018-02-04 | 2018-02-08 | 28 | 161d |  |
| 30 | 1.1.6 | **Site Engineering & HW Installation** | 51d | 2018-02-04 | 2018-04-15 |  | 26d |  |
| 31 |  | Site Survey + Report Preparation | 5d | 2018-02-04 | 2018-02-08 | 4FS+5d | 26d |  |
| 32 |  | C-Module Preparation | 5d | 2018-02-11 | 2018-02-15 | 31 | 26d |  |
| 33 |  | HW Installation & Cabling of BSP(Site 1) | 5d | 2018-03-26 | 2018-04-01 | 24, 32 | 0d |  |
| 34 |  | HW Installation & Cabling of BSP(Site 2) | 5d | 2018-04-02 | 2018-04-08 | 33 | 0d |  |
| 35 |  | HW Installation & Cabling of BSP(Test Bed) | 5d | 2018-04-09 | 2018-04-15 | 34 | 38d |  |
| 36 |  | MS 3: vIMS node power on | 0d | 2018-04-15 | 2018-04-15 | 30 | 115d |  |
| 37 | 1.1.8 | **Solution Deployment** | 83d | 2018-04-08 | 2018-08-01 |  | 3d |  |
| 38 | 1.1.8.1 | **Solution Deployment(Test Bed)** | 77d | 2018-04-16 | 2018-08-01 |  | 38d |  |
| 39 | 1.1.8.1.1 | **Platform & VNF SW Installation(Test Bed)** | 20d | 2018-04-16 | 2018-05-13 |  | 38d |  |
| 40 |  | BSP installation | 10d | 2018-04-16 | 2018-04-29 | 35 | 38d |  |
| 41 |  | RHOSP installation | 5d | 2018-04-30 | 2018-05-06 | 40 | 38d |  |
| 42 |  | VNF(vSBC,vCSCF,vMTAS,vIPworks,vBGF,vAFG,vEme) Instantiation & Configuration | 5d | 2018-05-07 | 2018-05-13 | 41 | 38d |  |
| 43 | 1.1.8.1.2 | **vIMS Integration(Test Bed)** | 22d | 2018-05-14 | 2018-06-12 |  | 38d |  |
| 44 |  | Service Layer integration(NFVI+IPBB integration) | 5d | 2018-05-14 | 2018-05-20 | 39 | 38d |  |
| 45 |  | vIMS internal integration(vCSCF,vSBG,vMTAS,vIPwoks) | 4d | 2018-05-21 | 2018-05-24 | 44 | 38d |  |
| 46 |  | vIMS integration with EPC,vEPC,UDC,MRS | 5d | 2018-05-27 | 2018-05-31 | 45 | 38d |  |
| 47 |  | vAFG deployment & configuration & integration | 5d | 2018-05-27 | 2018-05-31 | 45 | 46d |  |
| 48 |  | vIMS integration with CS/UT | 5d | 2018-06-03 | 2018-06-07 | 46 | 41d |  |
| 49 |  | vIMS integration with OSS | 3d | 2018-06-03 | 2018-06-05 | 46 | 38d |  |
| 50 |  | vIMS integration with Charging | 5d | 2018-06-06 | 2018-06-12 | 49 | 38d |  |
| 51 |  | vIMS integration with Provisioning | 5d | 2018-06-06 | 2018-06-12 | 49 | 38d |  |
| 52 |  | Internal Testings and Verifications | 20d | 2018-06-13 | 2018-07-11 | 43 | 38d |  |
| 53 | 1.1.8.1.4 | **Customer acceptance of Test Bed Deployments** | 15d | 2018-07-12 | 2018-08-01 |  | 38d |  |
| 54 |  | New HW Acceptance | 5d | 2018-07-12 | 2018-07-18 | 52 | 38d |  |
| 55 |  | vIMS Test Bed Solution Acceptance | 10d | 2018-07-19 | 2018-08-01 | 54 | 38d |  |
| 56 | 1.1.8.2 | **Solution Deployment(Site1)** | 50d | 2018-04-08 | 2018-06-17 |  | 3d |  |
| 57 | 1.1.8.2.1 | **Platform and VNF SW Installation** | 20d | 2018-04-08 | 2018-05-03 |  | 3d |  |
| 58 |  | BSP SW installation | 10d | 2018-04-08 | 2018-04-19 | 16, 33FS+2d | 3d |  |
| 59 |  | RHOSP installation | 5d | 2018-04-22 | 2018-04-26 | 58 | 3d |  |
| 60 |  | VNF(vSBC,vCSCF,vMTAS,vIPworks,vBGF,vAFG,vEMe)Instantiation & Configuration | 5d | 2018-04-29 | 2018-05-03 | 59 | 3d |  |
| 61 | 1.1.8.2.2 | **vIMS Integration** | 30d | 2018-05-06 | 2018-06-17 |  | 3d |  |
| 62 |  | Servise Layer integration(NFVI+IPBB integration) | 5d | 2018-05-06 | 2018-05-10 | 57 | 3d |  |
| 63 |  | vIMS internal integration(vCSCF,vSBG,vMTAS,vIPwoks) | 5d | 2018-05-13 | 2018-05-17 | 62 | 3d |  |
| 64 |  | vIMS integration with EPC,vEPC,UDC,MRS | 10d | 2018-05-20 | 2018-05-31 | 63 | 3d |  |
| 65 |  | vAFG deployment & configuration & integration | 12d | 2018-05-20 | 2018-06-04 | 63 | 11d |  |
| 66 |  | vIMS integration with CS/UT | 10d | 2018-06-03 | 2018-06-17 | 64 | 3d |  |
| 67 |  | vIMS integration with OSS | 5d | 2018-06-03 | 2018-06-07 | 64 | 3d |  |
| 68 |  | vIMS integration with Charging | 5d | 2018-06-10 | 2018-06-17 | 67 | 3d |  |
| 69 |  | vIMS integration with Provisioning | 5d | 2018-06-10 | 2018-06-17 | 67 | 3d |  |
| 70 |  | MS 4: vIMS site 1 complete | 0d | 2018-06-17 | 2018-06-17 | 56 | 71d |  |

| ID | WBS | Task | Duration | Start | Finish | Predecessors | Total float | Constraint |
| --- | --- | --- | --- | --- | --- | --- | --- | --- |
| 71 | 1.1.8.4 | **Solution Deployment(Site2)** | 50d | 2018-04-11 | 2018-06-20 |  | 0d |  |
| 72 | 1.1.8.4.1 | **Platform & VNF SW Installation(Site2)** | 20d | 2018-04-11 | 2018-05-08 |  | 0d |  |
| 73 |  | BSP SW installation | 10d | 2018-04-11 | 2018-04-24 | 16, 34FS+2d | 0d |  |
| 74 |  | RHOSP installation | 5d | 2018-04-25 | 2018-05-01 | 73 | 0d |  |
| 75 |  | VNF(vSBC,vCSCF,vMTAS,vIPworks,vBGF,vAFG,vEme)Instantiation & Configuration | 5d | 2018-05-02 | 2018-05-08 | 74 | 0d |  |
| 76 | 1.1.8.4.2 | **vIMS Integration** | 30d | 2018-05-09 | 2018-06-20 |  | 0d |  |
| 77 |  | Service Layer integration(switch configuration) | 5d | 2018-05-09 | 2018-05-15 | 72 | 0d |  |
| 78 |  | vIMS internal integration(vCSCF,vSBG,vMTAS,vIPwoks) | 5d | 2018-05-16 | 2018-05-22 | 77 | 0d |  |
| 79 |  | vIMS integration with EPC,vEPC,UDC,MRS | 10d | 2018-05-23 | 2018-06-05 | 78 | 0d |  |
| 80 |  | vAFG deployment & configuration & integration | 12d | 2018-05-23 | 2018-06-07 | 78 | 8d |  |
| 81 |  | vIMS integration with CS/UT,OSS,Charging and Provisioning | 10d | 2018-06-06 | 2018-06-20 | 79 | 0d |  |
| 82 |  | vIMS integration with OSS | 5d | 2018-06-06 | 2018-06-12 | 79 | 0d |  |
| 83 |  | vIMS integration with Charging | 5d | 2018-06-13 | 2018-06-20 | 82 | 0d |  |
| 84 |  | vIMS integration with Provisioning | 5d | 2018-06-13 | 2018-06-20 | 82 | 0d |  |
| 85 |  | MS 5: vIMS site 2 complete | 0d | 2018-06-20 | 2018-06-20 | 71 | 68d |  |
| 86 |  | vIMS Internal test and Verification | 20d | 2018-06-21 | 2018-07-18 | 76, 61 | 0d |  |
| 87 |  | MS 6: vIMS Ready for acceptance | 0d | 2018-07-18 | 2018-07-18 | 86 | 0d |  |
| 88 | 1.1.10 | **Acceptance of LIVE Node Deployments** | 26d | 2018-07-19 | 2018-08-29 |  | 0d |  |
| 89 |  | Site 1 HW Acceptance | 3d | 2018-07-19 | 2018-07-23 | 87 | 0d |  |
| 90 |  | Site 2 HW Acceptance | 3d | 2018-07-24 | 2018-07-26 | 89 | 0d |  |
| 91 |  | Ericsson Cloud Execution Environment Customer Demonstartion | 5d | 2018-07-29 | 2018-08-02 | 90 | 0d |  |
| 92 |  | vIMS Solution Acceptance Tests | 15d | 2018-08-05 | 2018-08-29 | 91 | 0d |  |
| 93 |  | MS 7: vIMS Ready for service | 0d | 2018-08-29 | 2018-08-29 | 88 | 0d |  |
| 94 | 1.1.12 | **Traffic migration** | 22d | 2018-08-30 | 2018-10-01 |  | 0d |  |
| 95 |  | vIMS Stabilization+Data Freeze Period after LIVE RFS | 5d | 2018-08-30 | 2018-09-05 | 93 | 0d |  |
| 96 |  | Traffic Cutover | 15d | 2018-09-06 | 2018-09-27 | 95 | 0d |  |
| 97 |  | Baby sitting | 2d | 2018-09-30 | 2018-10-01 | 96 | 0d |  |
| 98 |  | MS 8: vIMS traffic migration complete | 0d | 2018-10-01 | 2018-10-01 | 94 | 0d |  |
| 99 | 1.2 | **Legacy IMS SW Upgrade** | 26d | 2018-01-21 | 2018-02-25 |  | 150d |  |
| 100 | 1.2.1 | **Native MRS SW Upgrade** | 26d | 2018-01-21 | 2018-02-25 |  | 150d |  |
| 101 |  | MRS Upgrade Kickoff | 0d | 2018-01-21 | 2018-01-21 | 3 | 150d |  |
| 102 |  | NIR Analysis preparation | 3d | 2018-01-21 | 2018-01-23 | 101 | 150d |  |
| 103 |  | MS: NIR submit to Etisalat | 0d | 2018-01-23 | 2018-01-23 | 102 | 150d |  |
| 104 |  | SW Order | 5d | 2018-01-24 | 2018-01-30 | 103 | 168d |  |
| 105 |  | HLD&LLD update | 1d | 2018-01-24 | 2018-01-24 | 103 | 172d |  |
| 106 |  | MOP Preparaion | 5d | 2018-01-24 | 2018-01-30 | 103 | 150d |  |
| 107 |  | MS: MOP submit to Etisalat | 0d | 2018-01-30 | 2018-01-30 | 106 | 150d |  |
| 108 |  | Testbed UPG Verification and regression test | 8d | 2018-01-31 | 2018-02-11 | 107 | 150d |  |
| 109 |  | Live MRS Upgrade | 10d | 2018-02-12 | 2018-02-25 | 108 | 150d |  |
| 110 | 1.2.2 | **Native IPWorks SW Upgrade** | 26d | 2018-01-21 | 2018-02-25 |  | 150d |  |
| 111 |  | IPWorks SW Upgrade Kickoff | 0d | 2018-01-21 | 2018-01-21 | 3 | 150d |  |
| 112 |  | NIR Analysis preparation | 3d | 2018-01-21 | 2018-01-23 | 111 | 150d |  |
| 113 |  | MS: NIR submit to Etisalat | 0d | 2018-01-23 | 2018-01-23 | 112 | 150d |  |
| 114 |  | SW Order | 5d | 2018-01-24 | 2018-01-30 | 113 | 168d |  |
| 115 |  | HLD&LLD update | 1d | 2018-01-24 | 2018-01-24 | 113 | 172d |  |
| 116 |  | MOP Preparaion | 5d | 2018-01-24 | 2018-01-30 | 113 | 150d |  |
| 117 |  | MS: MOP submit to Etisalat | 0d | 2018-01-30 | 2018-01-30 | 116 | 150d |  |
| 118 |  | Testbed UPG Verification and regression test | 10d | 2018-01-31 | 2018-02-13 | 117 | 150d |  |
| 119 |  | Live IPWorks Upgrade | 8d | 2018-02-14 | 2018-02-25 | 118 | 150d |  |
| 120 | 1.3 | **License Server (NeLS)** | 58d | 2018-01-28 | 2018-04-17 |  | 113d |  |
| 121 |  | MS01 - Project Kickoff | 1d | 2018-01-28 | 2018-01-28 | 3FS+5d | 113d | start no earlier than 2017-05-01 |
| 122 | 1.3.2 | **NeLS Solution Design** | 15d | 2018-01-29 | 2018-02-18 |  | 130d |  |
| 123 |  | NeLS Architecture Requirement & Analysis | 5d | 2018-01-29 | 2018-02-04 | 121 | 130d |  |
| 124 |  | NeLS High Level Design | 5d | 2018-02-05 | 2018-02-11 | 123 | 130d |  |
| 125 |  | NeLS Low Level Design | 5d | 2018-02-12 | 2018-02-18 | 124 | 130d |  |
| 126 |  | SL design document preparation and follow-up | 5d | 2018-02-05 | 2018-02-11 | 123 | 155d |  |
| 127 |  | CCF Preparation and follow-up (Live and Test) | 5d | 2018-02-12 | 2018-02-18 | 126 | 155d |  |
| 128 |  | Acceptance Testing Plan (NeLS) | 5d | 2018-02-12 | 2018-02-18 | 124 | 155d |  |
| 129 | 1.3.3 | **HW and SW ordering** | 30d | 2018-01-29 | 2018-03-11 |  | 113d |  |
| 130 | 1.3.3.1 | **HW Ordering** | 30d | 2018-01-29 | 2018-03-11 |  | 113d |  |
| 131 |  | Order Placed as per BoQ | 5d | 2018-01-29 | 2018-02-04 | 121 | 113d |  |
| 132 |  | Lead Time for HW delivery | 25d | 2018-02-05 | 2018-03-11 | 131 | 113d |  |
| 133 | 1.3.3.2 | **SW Ordering** | 10d | 2018-01-29 | 2018-02-11 |  | 160d |  |
| 134 |  | SW ordering | 5d | 2018-01-29 | 2018-02-04 | 121 | 160d |  |
| 135 |  | Licenses ordering | 5d | 2018-02-05 | 2018-02-11 | 134 | 160d |  |
| 136 | 1.3.4 | **Site Engineering & HW Installation** | 27d | 2018-02-05 | 2018-03-13 |  | 138d |  |
| 137 |  | Site Survey + Report Preparation | 2d | 2018-02-05 | 2018-02-06 | 121FS+5d | 158d |  |
| 138 |  | C-Module Preparation | 5d | 2018-02-07 | 2018-02-13 | 137 | 158d |  |
| 139 |  | HW Installation & Cabling | 2d | 2018-03-12 | 2018-03-13 | 132 | 113d |  |
| 140 | 1.3.5 | **NeLS Solution Deployment** | 15d | 2018-03-14 | 2018-04-03 |  | 113d |  |

| ID | WBS | Task | Duration | Start | Finish | Predecessors | Total float | Constraint |
| --- | --- | --- | --- | --- | --- | --- | --- | --- |
| 141 |  | NeLS Installation, Configuration and Integration | 15d | 2018-03-14 | 2018-04-03 | 139, 125 | 113d |  |
| 142 |  | Internal verification | 5d | 2018-04-04 | 2018-04-10 | 141 | 113d |  |
| 143 |  | Customer Acceptance Test | 5d | 2018-04-11 | 2018-04-17 | 142 | 113d |  |
| 144 | 2 | **Optional: Entitlement Server(phase 1)** | 70d | 2018-01-07 | 2018-04-12 |  | 116d |  |
| 145 |  | MS 1: kickoff | 0d | 2018-01-07 | 2018-01-07 |  | 151d | start no earlier than 2018-01-07 |
| 146 | 2.2 | **Solution Design** | 35d | 2018-01-07 | 2018-02-22 |  | 151d |  |
| 147 | 2.2.1 | **High Level Design** | 20d | 2018-01-07 | 2018-02-01 |  | 156d |  |
| 148 |  | Information gathering and requirement development | 10d | 2018-01-07 | 2018-01-18 | 145 | 156d |  |
| 149 |  | Apple test case documented | 0d | 2018-01-07 | 2018-01-07 | 145 | 186d |  |
| 150 |  | NFVi(Mirantis) Update | 5d | 2018-01-14 | 2018-01-18 | 145FS+5d | 156d | finish no earlier than 2018-01-11 |
| 151 |  | EMA & Provisioning update | 10d | 2018-01-14 | 2018-01-25 | 145FS+5d | 151d | finish no earlier than 2018-01-18 |
| 152 |  | Service Layer Design | 10d | 2018-01-14 | 2018-01-25 | 150SS | 151d |  |
| 153 |  | HLD finial document | 5d | 2018-01-28 | 2018-02-01 | 148, 150, 151, 152 | 151d |  |
| 154 | 2.2.2 | **Low Level Design** | 15d | 2018-02-04 | 2018-02-22 |  | 151d |  |
| 155 |  | NFVi(Mirantis) Update | 10d | 2018-02-04 | 2018-02-15 | 153 | 156d | start no earlier than 2018-01-29 |
| 156 |  | SES | 10d | 2018-02-04 | 2018-02-15 | 153 | 151d | start no earlier than 2018-02-01 |
| 157 |  | Websheet | 10d | 2018-02-04 | 2018-02-15 | 153 | 156d | start no earlier than 2018-02-01 |
| 158 |  | MTAS(Update)+MOP | 10d | 2018-02-11 | 2018-02-22 | 156SS+5d | 151d | start no earlier than 2018-02-01 |
| 159 |  | EMA(Update)+MOP | 5d | 2018-02-11 | 2018-02-15 | 156SS+5d | 156d | start no earlier than 2018-02-01 |
| 160 |  | MSS(Update)+MOP | 5d | 2018-02-11 | 2018-02-15 | 156SS+5d | 156d | start no earlier than 2018-02-01 |
| 161 |  | LI-IMS(Update)+MOP | 5d | 2018-02-11 | 2018-02-15 | 156SS+5d | 156d | start no earlier than 2018-02-01 |
| 162 |  | EMM(Update)+MOP | 10d | 2018-02-11 | 2018-02-22 | 156SS+5d | 151d |  |
| 163 |  | HSS(Update)+MOP | 5d | 2018-02-11 | 2018-02-15 | 156SS+5d | 156d |  |
| 164 |  | IPWorks-AAA(Update)+MOP | 5d | 2018-02-11 | 2018-02-15 | 156SS+5d | 156d |  |
| 165 |  | OSS/ENIQ(Update)+MOP | 5d | 2018-02-11 | 2018-02-15 | 156SS+5d | 156d |  |
| 166 |  | SW ATP document for SES,Websheet | 5d | 2018-02-04 | 2018-02-08 | 153 | 161d |  |
| 167 |  | LLD acceptance | 0d | 2018-02-22 | 2018-02-22 | 155, 156, 157, 158, 159, 160, 161, 162, 163, 165, 166, 164 | 151d |  |
| 168 | 2.3 | **SW Ordering** | 15d | 2018-01-28 | 2018-02-15 |  | 116d |  |
| 169 |  | SW ordering | 5d | 2018-01-28 | 2018-02-01 | 4 | 121d | start no earlier than 2018-01-09 |
| 170 |  | Licenses key file generate | 5d | 2018-02-04 | 2018-02-08 | 169 | 121d | start no earlier than 2018-01-02 |
| 171 |  | MSS customization | 15d | 2018-01-28 | 2018-02-15 | 4 | 116d | start no earlier than 2018-01-02 |
| 172 |  | MTAS new feature ordering | 5d | 2018-01-28 | 2018-02-01 | 4 | 126d | start no earlier than 2018-01-02 |
| 173 |  | HSS new feature ordering | 5d | 2018-01-28 | 2018-02-01 | 4 | 126d | start no earlier than 2018-01-02 |
| 174 | 2.4 | **Deploymentand Integration** | 25d | 2018-02-11 | 2018-03-15 |  | 121d |  |
| 175 |  | Instantiation of vSES | 10d | 2018-02-11 | 2018-02-22 | 169, 170 | 121d |  |
| 176 | 2.4.2 | **MSIM feature Activation** | 10d | 2018-02-18 | 2018-03-01 |  | 116d |  |
| 177 |  | MSIM feature Activation in existing MTAS(sites1&2) | 10d | 2018-02-18 | 2018-03-01 | 168, 172 | 116d |  |
| 178 |  | CSCF configuration | 2d | 2018-02-18 | 2018-02-19 | 168, 172 | 154d |  |
| 179 |  | SBG configuration | 2d | 2018-02-18 | 2018-02-19 | 168, 172 | 154d |  |
| 180 |  | MSCs(MST2,MS21,22,24) Customizations Deployment | 15d | 2018-02-18 | 2018-03-08 | 171 | 141d |  |
| 181 | 2.4.4 | **Configuration & Integrations** | 10d | 2018-03-04 | 2018-03-15 |  | 116d |  |
| 182 |  | vSES integration with Ericsson EMA | 5d | 2018-03-04 | 2018-03-08 | 175, 177 | 121d |  |
| 183 |  | vSES integration with Etisalat’s eSIM server | 10d | 2018-03-04 | 2018-03-15 | 175, 177 | 116d |  |
| 184 |  | vSES integration with Etisalat’s WebSheet sserver | 10d | 2018-03-04 | 2018-03-15 | 175, 177 | 116d |  |
| 185 |  | vSES integration with Ericsson AAA | 5d | 2018-03-04 | 2018-03-08 | 175, 177 | 121d |  |
| 186 |  | vSES integration OSS/ENIQ | 5d | 2018-03-04 | 2018-03-08 | 175, 177 | 121d |  |
| 187 |  | CEE integration with OSS-RC | 5d | 2018-03-04 | 2018-03-08 | 175, 177 | 121d |  |
| 188 |  | HSS configuration | 2d | 2018-03-04 | 2018-03-05 | 177, 175 | 124d |  |
| 189 |  | EMM configuration | 2d | 2018-03-04 | 2018-03-05 | 177, 175 | 124d |  |
| 190 |  | LI Warrant configuration | 2d | 2018-03-04 | 2018-03-05 | 177, 175 | 124d |  |
| 191 | 2.5 | **Testing** | 20d | 2018-03-18 | 2018-04-12 |  | 116d |  |
| 192 |  | E2E testing with E/// IMS and E/// MS | 20d | 2018-03-18 | 2018-04-12 | 181 | 116d |  |
| 193 |  | CIT testing | 20d | 2018-03-18 | 2018-04-12 | 181 | 116d |  |
| 194 |  | ISS testing | 20d | 2018-03-18 | 2018-04-12 | 181 | 116d |  |
| 195 | 3 | **Optional: Entitlement Server(phase 2)** | 104d | 2018-01-25 | 2018-06-21 |  | 67d |  |
| 196 |  | MS 1: vSES PO Received | 0d | 2018-01-25 | 2018-01-25 | 3FS+5d | 71d | start no earlier than 2018-01-25 |
| 197 | 3.2 | **Solution Design** | 47d | 2018-01-28 | 2018-04-02 |  | 124d |  |
| 198 |  | Requirement Development | 2d | 2018-01-28 | 2018-01-29 | 196 | 124d |  |
| 199 |  | Service Layer Design | 20d | 2018-01-30 | 2018-02-26 | 198 | 149d |  |
| 200 | 3.2.3 | **High Level Design** | 20d | 2018-01-30 | 2018-02-26 |  | 124d |  |
| 201 |  | NFVi(RHOSP) | 20d | 2018-01-30 | 2018-02-26 | 198 | 124d |  |
| 202 |  | SES | 20d | 2018-01-30 | 2018-02-26 | 198 | 124d |  |
| 203 |  | EMA & Provisioning | 20d | 2018-01-30 | 2018-02-26 | 198 | 124d |  |
| 204 | 3.2.4 | **Low Level Design** | 10d | 2018-02-27 | 2018-03-12 |  | 139d |  |
| 205 |  | NFVi(RHOSP) | 10d | 2018-02-27 | 2018-03-12 | 200 | 139d |  |
| 206 |  | MTAS(Update)+MOP | 10d | 2018-02-27 | 2018-03-12 | 200 | 139d |  |
| 207 |  | SES | 10d | 2018-02-27 | 2018-03-12 | 200 | 139d |  |
| 208 |  | Websheet | 10d | 2018-02-27 | 2018-03-12 | 200 | 139d |  |
| 209 |  | CSCF(Update)+MOP | 10d | 2018-02-27 | 2018-03-12 | 200 | 139d |  |
| 210 |  | SBG(Update) | 5d | 2018-02-27 | 2018-03-05 | 200 | 144d |  |

| ID | WBS | Task | Duration | Start | Finish | Predecessors | Total float | Constraint |
| --- | --- | --- | --- | --- | --- | --- | --- | --- |
| 211 |  | Definition of use TC with Apple | 25d | 2018-02-27 | 2018-04-02 | 200 | 124d |  |
| 212 |  | MS 2: vSES Solution Design Complete | 0d | 2018-04-02 | 2018-04-02 | 197 | 124d |  |
| 213 | 3.4 | **SW Ordering** | 10d | 2018-02-04 | 2018-02-15 |  | 71d |  |
| 214 |  | SW ordering | 5d | 2018-02-04 | 2018-02-08 | 196FS+5d | 71d |  |
| 215 |  | Licenses ordering | 5d | 2018-02-11 | 2018-02-15 | 214 | 71d |  |
| 216 | 3.5 | **Implementation in RHOSP** | 73d | 2018-02-18 | 2018-05-29 |  | 71d |  |
| 217 |  | Instantiation of vSES on RHOSP in Site1&2 | 10d | 2018-05-02 | 2018-05-15 | 59, 74 | 67d |  |
| 218 |  | MSIM feature Activation in existing MTAS(sites1&2) | 5d | 2018-05-16 | 2018-05-22 | 217 | 88d |  |
| 219 | 3.5.3 | **New integrations** | 10d | 2018-05-16 | 2018-05-29 |  | 83d |  |
| 220 |  | EMA with Ericsson vSES | 5d | 2018-05-16 | 2018-05-22 | 217 | 88d |  |
| 221 |  | vSES with Etisalat’s eSIM server | 10d | 2018-05-16 | 2018-05-29 | 217 | 83d |  |
| 222 |  | vSES with Etisalat’s WebSheet sserver | 10d | 2018-05-16 | 2018-05-29 | 217 | 83d |  |
| 223 |  | vSES with Ericsson AAA | 5d | 2018-05-16 | 2018-05-22 | 217 | 88d |  |
| 224 |  | vSES to OSS‐ RC for FPM | 5d | 2018-05-16 | 2018-05-22 | 217 | 88d |  |
| 225 |  | Cloud to OSS‐ RC | 5d | 2018-05-16 | 2018-05-22 | 217 | 88d |  |
| 226 | 3.5.4 | **System configurations** | 6d | 2018-05-16 | 2018-05-23 |  | 67d |  |
| 227 |  | MSIM feature inMTAS | 2d | 2018-05-16 | 2018-05-17 | 217 | 67d |  |
| 228 |  | Parameter in CSCF | 2d | 2018-05-20 | 2018-05-21 | 227 | 67d |  |
| 229 |  | Parameter in SBG | 2d | 2018-05-22 | 2018-05-23 | 228 | 67d |  |
| 230 | 3.5.5 | **Customizations Development** | 45d | 2018-02-18 | 2018-04-19 |  | 71d |  |
| 231 |  | Ericsson MSCs | 45d | 2018-02-18 | 2018-04-19 | 213 | 71d |  |
| 232 |  | Ericsson vSES | 45d | 2018-02-18 | 2018-04-19 | 213 | 109d |  |
| 233 | 3.5.6 | **Customizations Loading** | 20d | 2018-04-22 | 2018-05-17 |  | 71d |  |
| 234 | 3.5.6.1 | **MSC Customization** | 20d | 2018-04-22 | 2018-05-17 |  | 71d |  |
| 235 |  | on Test MSC | 5d | 2018-04-22 | 2018-04-26 | 231 | 71d |  |
| 236 |  | on MSC21 | 5d | 2018-04-29 | 2018-05-03 | 235 | 71d |  |
| 237 |  | on MSC22 | 5d | 2018-05-06 | 2018-05-10 | 236 | 71d |  |
| 238 |  | on MSC24 | 5d | 2018-05-13 | 2018-05-17 | 237 | 71d |  |
| 239 | 3.5.7 | **vSES Customization for Huawei** | 2d | 2018-04-22 | 2018-04-23 |  | 109d |  |
| 240 |  | Site 1 | 1d | 2018-04-22 | 2018-04-22 | 232 | 109d |  |
| 241 |  | Site 2 | 1d | 2018-04-23 | 2018-04-23 | 240 | 109d |  |
| 242 |  | MS 3: vSES Implementation Complete | 0d | 2018-05-29 | 2018-05-29 | 216 | 83d |  |
| 243 | 3.7 | **Testing** | 20d | 2018-05-24 | 2018-06-21 |  | 67d |  |
| 244 |  | E2E testing with E/// IMS and E/// MS | 20d | 2018-05-24 | 2018-06-21 | 226, 233 | 67d |  |
| 245 |  | MS 4: vSES Acceptance complete | 0d | 2018-06-21 | 2018-06-21 | 243 | 67d |  |
| 246 | 4 | **Optional: IMS Upgrade LI-IMS** | 111d | 2018-01-25 | 2018-07-02 |  | 60d |  |
| 247 |  | MS 1: LI-IMS PO Received | 0d | 2018-01-25 | 2018-01-25 | 3FS+5d | 60d | start no earlier than 2016-11-01 |
| 248 | 4.2 | **Solution Design** | 25d | 2018-02-04 | 2018-03-08 | 247FS+5d | 76d |  |
| 249 |  | User Requirement and information Gathering | 10d | 2018-02-04 | 2018-02-15 | 247 | 76d |  |
| 250 |  | High Level Design Preparation | 10d | 2018-02-18 | 2018-03-01 | 249 | 76d |  |
| 251 |  | Low Level Design Preparation | 5d | 2018-03-04 | 2018-03-08 | 250 | 76d |  |
| 252 |  | Verification Test Specification | 5d | 2018-03-04 | 2018-03-08 | 250 | 76d |  |
| 253 |  | MS 2: LI-IMS Solution Design Complete | 0d | 2018-03-08 | 2018-03-08 | 248 | 141d |  |
| 254 |  | Lift of patch for Etisalat LI-IMS(MED) | 30d | 2018-02-04 | 2018-03-15 | 247FS+5d | 71d |  |
| 255 | 4.5 | **HW and SW ordering** | 36d | 2018-02-04 | 2018-03-25 |  | 60d |  |
| 256 | 4.5.1 | **HW Ordering** | 36d | 2018-02-04 | 2018-03-25 |  | 60d |  |
| 257 |  | Order Placed as per BoQ | 1d | 2018-02-04 | 2018-02-04 | 247FS+5d | 60d |  |
| 258 |  | Lead Time for HW delivery | 7w | 2018-02-05 | 2018-03-25 | 257 | 60d |  |
| 259 | 4.5.2 | **SW Ordering** | 10d | 2018-02-04 | 2018-02-15 |  | 156d |  |
| 260 |  | SW ordering | 1w | 2018-02-04 | 2018-02-08 | 257SS | 156d |  |
| 261 |  | Licenses ordering | 5d | 2018-02-11 | 2018-02-15 | 260 | 156d |  |
| 262 | 4.6 | **Site Engineering & HW Installation** | 21d | 2018-03-04 | 2018-04-01 |  | 60d |  |
| 263 |  | Site Survey | 1d | 2018-03-04 | 2018-03-05 | 264SF-5d | 80d | start no earlier than 2016-06-21 |
| 264 |  | Enginnering Documentation | 5d | 2018-03-12 | 2018-03-19 | 265SF-5d | 70d | start no earlier than 2016-06-21 |
| 265 |  | HW Installation & Cabling | 5d | 2018-03-26 | 2018-04-01 | 256 | 60d | start no earlier than 2016-06-21 |
| 266 |  | MS 3: LI-IMS power on | 0d | 2018-04-01 | 2018-04-01 | 262 | 125d |  |
| 267 | 4.8 | **Solution Deployment** | 30d | 2018-04-02 | 2018-05-13 |  | 60d |  |
| 268 |  | SW installation and configuration | 10d | 2018-04-02 | 2018-04-15 | 248, 254, 262 | 60d |  |
| 269 | 4.8.2 | **Integtation** | 20d | 2018-04-16 | 2018-05-13 |  | 60d |  |
| 270 |  | SL serivce implement | 5d | 2018-04-16 | 2018-04-22 | 268 | 60d |  |
| 271 |  | SBG integration | 5d | 2018-04-23 | 2018-04-29 | 270 | 60d |  |
| 272 |  | MTAS integration | 5d | 2018-04-30 | 2018-05-06 | 271 | 60d |  |
| 273 |  | CSCF integration | 5d | 2018-05-07 | 2018-05-13 | 272 | 60d |  |
| 274 |  | MS 4: LI-IMS Implementation Complete | 0d | 2018-05-13 | 2018-05-13 | 267 | 95d |  |
| 275 |  | Internal Verification | 10d | 2018-05-14 | 2018-05-27 | 267 | 60d |  |
| 276 |  | MS 5: LI-IMS Ready for Acceptance | 0d | 2018-05-27 | 2018-05-27 | 275 | 60d |  |
| 277 |  | Customer Acceptance | 10d | 2018-05-28 | 2018-06-10 | 276 | 60d |  |
| 278 |  | MS 6: LI-IMS Ready for Service | 0d | 2018-06-10 | 2018-06-10 | 277 | 60d |  |
| 279 |  | Traffic Cutover | 10d | 2018-06-11 | 2018-06-25 | 278 | 60d |  |
| 280 |  | MS 7: LI-IMS in service | 0d | 2018-06-25 | 2018-06-25 | 279 | 65d |  |

| ID | Task | Duration | Start | Finish | Predecessors | Total float |
| --- | --- | --- | --- | --- | --- | --- |
| 281 | Handover | 5d | 2018-06-26 | 2018-07-02 | 279 | 60d |

## Version 2 (saved 2018-01-13)

Note of the change: modify mpp

Last finish stays 2018-10-01.

Added:

| ID | Task | Duration | Start | Finish |
| --- | --- | --- | --- | --- |
| 282 | test | 1d? | 2017-12-26 | 2017-12-26 |
